# Cardeto Smart Park

Schedule from MS Project, 2021-02-02 to 2022-01-17, costs in €.

## Calendars

- Standard: Mon-Fri 09:00-13:00, 14:00-18:00; Sat-Sun off.

## Resources

| Resource | Rate | Cost per use |
| --- | --- | --- |
| Patrizio Fallaci - Project manager | 39.17 |  |
| Clemente Russo - Chief IoT Officer | 62.5 |  |
| Adriano Mazzi - Full Stack Developer | 21.38 |  |
| Gianfranco Greco - Full Stack Developer | 21.38 |  |
| Gianni Pagnotto - DSRC system engineer | 18.23 |  |
| Antonino Bellucci - Computer Vision Engineer | 22.29 |  |
| Giacomo Loggia - IoT Network Architect | 26.35 |  |
| Cassandra Ferri - Sistemista | 28.44 |  |
| Christian Genovesi - Cloud Architect | 41.67 |  |
| Riccardo Barbuti - Web Developer Jr. | 12.38 |  |
| Fernando Brizzi - Web Developer Sr. | 24.38 |  |
| Claudia Donati - Web Designer | 17.86 |  |
| Marco Ferrari - App Developer | 16.87 |  |
| Bryan Johnson - App Developer | 16.87 |  |
| Costanzo Rossi - Mobile Designer | 17.86 |  |
| Giacomo Ascani - Marketing Supervisor | 19.62 |  |
| Antonio Cosenza - Social Media Manager | 24.48 |  |
| Lampione Atlas | 160 |  |
| Sensore di passaggio ingresso | 4.5 |  |
| Sensore di passaggio bagno | 4.5 |  |
| Cablaggio sensori passaggio |  | 20 |
| Sensore di umidità | 14.25 |  |
| Cablaggio sensori irrigazione |  | 50 |
| Sensore di capacità | 27 |  |
| Panchine Smart | 2700 |  |
| Tavolo picnic Smart | 2944 |  |
| Telecamera Wi-FI 360° | 171 |  |
| Wi-FI board | 5.6 |  |
| Intervento Elittricista |  |  |
| PC Server | 1000 |  |
| Cablaggio dispositivi di rete | 70 |  |
| Router | 50 |  |
| Router Esterno | 338 |  |
| Repeater Esterno | 40 |  |
| Gateway IoT | 500 |  |
| Studio Grafico |  |  |
| Luciana Ranalli - Responsabile Sicurezza | 21.08 |  |
| Giovanni Fazzini- Responsabile Qualità | 19.34 |  |

## Schedule

| ID | WBS | Task | Type | Duration | Start | Finish | Predecessors | Baseline start | Baseline finish | Baseline duration | Total slack | Constraint | Resources | Work | Cost |
| --- | --- | --- | --- | --- | --- | --- | --- | --- | --- | --- | --- | --- | --- | --- | --- |
| 1 | 1 | **Gestione e coordinamento del progetto** |  | 250d | 2021-02-02 | 2022-01-17 |  | 2021-02-02 | 2022-01-10 | 245d | 0d |  |  | 3680h | 183,899.92 |
| 2 | 1.1 | Business Case | milestone | 0d | 2021-02-02 | 2021-02-02 |  |  |  |  | 250d |  |  |  |  |
| 3 | 1.2 | Milestone di inizio progetto | milestone, manual | 0d | 2021-02-02 | 2021-02-02 |  | 2021-02-02 | 2021-02-02 | 0d |  |  |  |  |  |
| 4 | 1.3 | Project Charter | milestone | 0d | 2021-02-02 | 2021-02-02 |  |  |  |  | 250d |  |  |  |  |
| 5 | 1.4 | Pianificazione |  | 5d | 2021-02-03 | 2021-02-09 | 3 | 2021-02-03 | 2021-02-09 | 5d | 0d | start no earlier than 2021-02-03 | Patrizio Fallaci - Project manager | 40h | 1,566.8 |
| 6 | 1.5 | Esecuzione e controllo |  | 240d | 2021-02-10 | 2022-01-11 | 5 | 2021-02-10 | 2022-01-06 | 237d | 2d | start no earlier than 2021-02-09 | Patrizio Fallaci - Project manager | 1920h | 75,206.4 |
| 7 | 1.6 | Coordinamento | manual | 213d | 2021-02-02 | 2022-01-13 | 3 | 2021-02-02 | 2022-01-10 | 245d |  |  | Clemente Russo - Chief IoT Officer | 1704h | 106,500 |
| 8 | 1.7 | Chiusura progetto |  | 2d | 2022-01-14 | 2022-01-17 | 6, 87 | 2022-01-07 | 2022-01-10 | 2d | 0d | start no earlier than 2022-01-07 | Patrizio Fallaci - Project manager | 16h | 626.72 |
| 9 | 1.8 | Documento di chiusura | milestone | 0d | 2022-01-17 | 2022-01-17 | 8 |  |  |  | 0d |  |  |  |  |
| 10 | 1.9 | Milestone chiusura progetto | milestone | 0d | 2022-01-17 | 2022-01-17 | 8 | 2022-01-10 | 2022-01-10 | 0d | 0d |  |  |  |  |
| 11 | 2 | **Selezione ed ingegnerizzazione di sensori ed attuatori** |  | 98d | 2021-02-10 | 2021-06-28 | 5 | 2021-02-10 | 2021-06-28 | 99d | 0d |  |  | 2060h | 101,190.8 |
| 12 | 2.1 | Raccolta dei requisiti |  | 7d | 2021-02-10 | 2021-02-18 | 5 | 2021-02-10 | 2021-02-18 | 7d | 0d |  | Clemente Russo - Chief IoT Officer; Gianni Pagnotto - DSRC system engineer | 112h | 4,520.88 |
| 13 | 2.2 | Documento dei requisiti | milestone | 0d | 2021-02-18 | 2021-02-18 | 12 | 2021-02-18 | 2021-02-18 | 0d | 237d |  |  |  |  |
| 14 | 2.3 | Pianificazione e stima dei dispositivi IoT necessari |  | 4d | 2021-02-19 | 2021-02-24 | 12 | 2021-02-19 | 2021-02-24 | 4d | 0d |  | Clemente Russo - Chief IoT Officer; Gianni Pagnotto - DSRC system engineer | 64h | 2,583.36 |
| 15 | 2.4 | Piano posizionamento dispositivi | milestone | 0d | 2021-02-24 | 2021-02-24 | 14 | 2021-02-24 | 2021-02-24 | 0d | 233d |  |  |  |  |
| 16 | 2.5 | Selezione nel mercato dei vari sensori e dispositivi |  | 14d | 2021-02-25 | 2021-03-16 | 14 | 2021-02-25 | 2021-03-16 | 14d | 0d |  | Clemente Russo - Chief IoT Officer; Gianni Pagnotto - DSRC system engineer; Cablaggio sensori irrigazione; Cablaggio sensori passaggio; Lampione Atlas [8200%]; Sensore di passaggio bagno [1000%]; Sensore di passaggio ingresso [1000%]; Sensore di umidità [800%]; Panchine Smart [800%]; Tavolo picnic Smart [400%]; Sensore di capacità [1500%]; Wi-FI board [10000%]; Telecamera Wi-FI 360° [400%]; Luciana Ranalli - Responsabile Sicurezza; Giovanni Fazzini- Responsabile Qualità | 448h | 61,987.8 |
| 17 | 2.6 | Report dei contratti | milestone | 0d | 2021-03-16 | 2021-03-16 | 16 | 2021-03-16 | 2021-03-16 | 0d | 219d |  |  |  |  |
| 18 | 2.7 | Installazione dispositivi IoT |  | 7d | 2021-03-17 | 2021-03-25 | 16 | 2021-03-17 | 2021-03-25 | 7d | 0d |  | Cassandra Ferri - Sistemista; Intervento Elittricista [0.1%] | 56h | 2,432.64 |
| 19 | 2.8 | Sistema di dispositivi IoT | milestone | 0d | 2021-03-25 | 2021-03-25 | 18 | 2021-03-25 | 2021-03-25 | 0d | 212d |  |  |  |  |
| 20 | 2.9 | Report post installazione | milestone | 0d | 2021-03-25 | 2021-03-25 | 18 | 2021-03-25 | 2021-03-25 | 0d | 212d |  |  |  |  |
| 21 | 2.10 | Progettazione e realizzazione degli algoritmi di raccolta dati |  | 60d | 2021-03-26 | 2021-06-17 | 18 | 2021-03-26 | 2021-06-17 | 60d | 0d |  | Adriano Mazzi - Full Stack Developer; Gianfranco Greco - Full Stack Developer; Antonino Bellucci - Computer Vision Engineer | 1220h | 26,320.2 |
| 22 | 2.11 | Documentazione algoritmi e interfacce | milestone | 0d | 2021-06-17 | 2021-06-17 | 21 | 2021-06-17 | 2021-06-17 | 0d | 152d |  |  |  |  |
| 23 | 2.12 | SAL fine installazione |  | 1d | 2021-04-30 | 2021-04-30 | 18 | 2021-04-30 | 2021-04-30 | 1d | 186d | start no earlier than 2021-04-30 |  |  |  |
| 24 | 2.13 | Test preliminari dei dispositivi |  | 4d | 2021-06-18 | 2021-06-23 | 21 | 2021-06-18 | 2021-06-23 | 4d | 0d |  | Gianfranco Greco - Full Stack Developer; Adriano Mazzi - Full Stack Developer; Luciana Ranalli - Responsabile Sicurezza; Giovanni Fazzini- Responsabile Qualità | 128h | 2,661.76 |
| 25 | 2.14 | Report test preliminari | milestone | 0d | 2021-06-23 | 2021-06-23 | 24 | 2021-06-23 | 2021-06-23 | 0d | 148d |  |  |  |  |
| 26 | 2.15 | Definizione piano manutenzione |  | 2d | 2021-06-24 | 2021-06-25 | 24 | 2021-06-24 | 2021-06-25 | 2d | 0d |  | Adriano Mazzi - Full Stack Developer; Gianfranco Greco - Full Stack Developer | 32h | 684.16 |
| 27 | 2.16 | Piano di manutenzione | milestone | 0d | 2021-06-25 | 2021-06-25 | 26 | 2021-06-25 | 2021-06-25 | 0d | 146d |  |  |  |  |
| 28 | 2.17 | Milestone fine ingegnerizzazione | milestone | 0d | 2021-06-28 | 2021-06-28 | 26 | 2021-06-28 | 2021-06-28 | 0d | 146d | start no earlier than 2021-06-28 |  |  |  |

| ID | WBS | Task | Type | Duration | Start | Finish | Predecessors | Baseline start | Baseline finish | Baseline duration | Total slack | Free slack | Resources | Work | Cost |
| --- | --- | --- | --- | --- | --- | --- | --- | --- | --- | --- | --- | --- | --- | --- | --- |
| 29 | 3 | **Realizzazione dell’infrastruttura ICT** |  | 84d | 2021-03-26 | 2021-07-21 | 18 | 2021-03-26 | 2021-07-21 | 84d | 5d |  |  | 1072h | 34,138.8 |
| 30 | 3.1 | Definizione infrast. rete separata |  | 10d | 2021-03-26 | 2021-04-08 | 18 | 2021-03-26 | 2021-04-08 | 10d | 5d | 0d | Cassandra Ferri - Sistemista | 80h | 2,275.2 |
| 31 | 3.2 | Definizione rete dedicata IoT |  | 10d | 2021-03-26 | 2021-04-08 | 18 | 2021-03-26 | 2021-04-08 | 10d | 5d | 0d | Giacomo Loggia - IoT Network Architect; Clemente Russo - Chief IoT Officer | 160h | 7,108 |
| 32 | 3.3 | Pianificazione architetture rete | milestone | 0d | 2021-04-08 | 2021-04-08 | 30, 31 | 2021-04-08 | 2021-04-08 | 0d | 202d |  |  |  |  |
| 33 | 3.4 | SAL fine definizione rete |  | 1d | 2021-04-09 | 2021-04-09 | 30, 31 | 2021-04-09 | 2021-04-09 | 1d | 201d |  |  |  |  |
| 34 | 3.5 | Analisi e definizione della infrastruttura di comunicazione |  | 7d | 2021-04-09 | 2021-04-19 | 30, 31 | 2021-04-09 | 2021-04-19 | 7d | 5d | 0d | Giacomo Loggia - IoT Network Architect | 56h | 1,475.6 |
| 35 | 3.6 | Valutazione archiviazione e analisi big data |  | 7d | 2021-04-20 | 2021-04-28 | 34 | 2021-04-20 | 2021-04-28 | 7d | 187d | 0d | Christian Genovesi - Cloud Architect | 56h | 2,333.52 |
| 36 | 3.7 | Selezione architettura Cloud |  | 1d | 2021-04-29 | 2021-04-29 | 35 | 2021-04-29 | 2021-04-29 | 1d | 187d | 0d | Christian Genovesi - Cloud Architect | 8h | 333.36 |
| 37 | 3.8 | Architettura cloud | milestone | 0d | 2021-04-29 | 2021-04-29 | 36 | 2021-04-29 | 2021-04-29 | 0d | 187d |  |  |  |  |
| 38 | 3.9 | Acquisto dell’attrezzatura |  | 10d | 2021-04-20 | 2021-05-03 | 34 | 2021-04-20 | 2021-05-03 | 10d | 5d | 0d | PC Server; Router; Router Esterno; Repeater Esterno [200%]; Cablaggio dispositivi di rete |  | 1,538 |
| 39 | 3.10 | Acquisto del gateway IoT |  | 10d | 2021-04-20 | 2021-05-03 | 34 | 2021-04-20 | 2021-05-03 | 10d | 5d | 0d | Gateway IoT |  | 500 |
| 40 | 3.11 | Realizzazione rete IoT |  | 30d | 2021-05-04 | 2021-06-14 | 39, 38 | 2021-05-04 | 2021-06-14 | 30d | 5d | 0d | Cassandra Ferri - Sistemista; Giacomo Loggia - IoT Network Architect | 384h | 10,419.36 |
| 41 | 3.12 | Architettura di rete IoT | milestone | 0d | 2021-06-14 | 2021-06-14 | 40 | 2021-06-14 | 2021-06-14 | 0d | 155d |  |  |  |  |
| 42 | 3.13 | Documentazione topologia rete | milestone | 0d | 2021-06-14 | 2021-06-14 | 40 | 2021-06-14 | 2021-06-14 | 0d | 155d |  |  |  |  |
| 43 | 3.14 | SAL fine infrastruttura rete |  | 1d | 2021-06-15 | 2021-06-15 | 40 | 2021-06-15 | 2021-06-15 | 1d | 154d |  |  |  |  |
| 44 | 3.15 | Definizione-pianificazione-attivazione sistema monitoraggio rete |  | 20d | 2021-06-15 | 2021-07-12 | 40 | 2021-06-15 | 2021-07-12 | 20d | 128d | 0d | Cassandra Ferri - Sistemista; Giacomo Loggia - IoT Network Architect | 160h | 4,299.6 |
| 45 | 3.16 | Test rete |  | 7d | 2021-07-13 | 2021-07-21 | 44 | 2021-07-13 | 2021-07-21 | 7d | 128d | 0d | Cassandra Ferri - Sistemista; Luciana Ranalli - Responsabile Sicurezza; Giovanni Fazzini- Responsabile Qualità | 168h | 3,856.16 |
| 46 | 3.17 | Report test preliminare funzionamento rete | milestone | 0d | 2021-07-21 | 2021-07-21 | 45 | 2021-07-21 | 2021-07-21 | 0d | 128d |  |  |  |  |
| 47 | 3.18 | Milestone fine realizzazione struttura ICT | milestone | 0d | 2021-07-21 | 2021-07-21 | 45 | 2021-07-21 | 2021-07-21 | 0d | 128d |  |  |  |  |
| 48 | 4 | **Realizzazione del software di gestione** |  | 82d | 2021-06-15 | 2021-10-06 | 40 | 2021-06-15 | 2021-09-29 | 77d | 5d |  |  | 1584h | 33,267.04 |
| 49 | 4.1 | Raccolta e analisi dei requisiti |  | 4d | 2021-06-15 | 2021-06-18 | 40 | 2021-06-15 | 2021-06-18 | 4d | 5d | 0d | Claudia Donati - Web Designer | 32h | 571.52 |
| 50 | 4.2 | Documento dei requisiti | milestone | 0d | 2021-06-18 | 2021-06-18 | 49 | 2021-06-18 | 2021-06-18 | 0d | 151d |  |  |  |  |
| 51 | 4.3 | Sviluppo del backend |  | 30d | 2021-06-28 | 2021-08-06 | 49, 26 | 2021-06-21 | 2021-07-30 | 30d | 0d |  | Adriano Mazzi - Full Stack Developer; Gianfranco Greco - Full Stack Developer; Riccardo Barbuti - Web Developer Jr.; Fernando Brizzi - Web Developer Sr. | 540h | 11,365.2 |
| 52 | 4.4 | Applicazione Java locale | milestone | 0d | 2021-08-06 | 2021-08-06 | 51 | 2021-07-30 | 2021-07-30 | 0d | 116d |  |  |  |  |
| 53 | 4.5 | Integrazione con servizio cloud |  | 10d | 2021-08-09 | 2021-08-20 | 51 | 2021-08-02 | 2021-08-13 | 10d | 0d |  | Riccardo Barbuti - Web Developer Jr.; Fernando Brizzi - Web Developer Sr.; Christian Genovesi - Cloud Architect; Adriano Mazzi - Full Stack Developer; Gianfranco Greco - Full Stack Developer | 324h | 8,298.32 |
| 54 | 4.6 | Sviluppo del frontend |  | 20d | 2021-08-23 | 2021-09-17 | 53 | 2021-08-16 | 2021-09-10 | 20d | 73d | 0d | Claudia Donati - Web Designer; Fernando Brizzi - Web Developer Sr.; Riccardo Barbuti - Web Developer Jr. | 368h | 6,697.28 |
| 55 | 4.7 | Applicazione web | milestone | 0d | 2021-09-17 | 2021-09-17 | 54 | 2021-09-10 | 2021-09-10 | 0d | 86d |  |  |  |  |
| 56 | 4.8 | Test del software |  | 4d | 2021-09-20 | 2021-09-23 | 54 | 2021-09-13 | 2021-09-16 | 4d | 73d | 0d | Riccardo Barbuti - Web Developer Jr.; Fernando Brizzi - Web Developer Sr.; Luciana Ranalli - Responsabile Sicurezza; Giovanni Fazzini- Responsabile Qualità | 128h | 2,469.76 |
| 57 | 4.9 | Report di test | milestone | 0d | 2021-09-23 | 2021-09-23 | 56 | 2021-09-16 | 2021-09-16 | 0d | 82d |  |  |  |  |
| 58 | 4.10 | SAL fine sviluppo software |  | 1d | 2021-09-24 | 2021-09-24 | 56 | 2021-09-17 | 2021-09-17 | 1d | 81d |  |  |  |  |
| 59 | 4.11 | Scrittura della documentazione |  | 7d | 2021-09-24 | 2021-10-04 | 56 | 2021-09-17 | 2021-09-27 | 7d | 73d | 0d | Riccardo Barbuti - Web Developer Jr.; Fernando Brizzi - Web Developer Sr.; Adriano Mazzi - Full Stack Developer; Gianfranco Greco - Full Stack Developer | 160h | 3,276.8 |
| 60 | 4.12 | Documentazione software | milestone | 0d | 2021-10-04 | 2021-10-04 | 59 | 2021-09-10 | 2021-09-10 | 0d | 75d |  |  |  |  |
| 61 | 4.13 | Guida di utilizzo | milestone | 0d | 2021-10-04 | 2021-10-04 | 59 | 2021-09-10 | 2021-09-10 | 0d | 75d |  |  |  |  |
| 62 | 4.14 | Definizione del piano di manutenzione e aggiornamento |  | 2d | 2021-10-05 | 2021-10-06 | 59 | 2021-09-28 | 2021-09-29 | 2d | 73d | 0d | Fernando Brizzi - Web Developer Sr.; Riccardo Barbuti - Web Developer Jr. | 32h | 588.16 |
| 63 | 4.15 | Piano di manutenzione e aggiornamento | milestone | 0d | 2021-10-06 | 2021-10-06 | 62 | 2021-09-29 | 2021-09-29 | 0d | 73d |  |  |  |  |
| 64 | 4.16 | Milestone fine realizzazione software di gestione | milestone | 0d | 2021-10-06 | 2021-10-06 | 62 | 2021-09-29 | 2021-09-29 | 0d | 73d |  |  |  |  |

| ID | WBS | Task | Type | Duration | Start | Finish | Predecessors | Baseline start | Baseline finish | Baseline duration | Total slack | Free slack | Constraint | Resources | Work | Cost |
| --- | --- | --- | --- | --- | --- | --- | --- | --- | --- | --- | --- | --- | --- | --- | --- | --- |
| 65 | 5 | **Realizzazione dell’applicazione mobile** |  | 122d | 2021-06-15 | 2021-12-01 | 40 | 2021-06-15 | 2021-11-24 | 117d | 33d |  |  |  | 1440h | 25,585.68 |
| 66 | 5.1 | Raccolta e analisi dei requisiti |  | 4d | 2021-06-15 | 2021-06-18 | 40 | 2021-06-15 | 2021-06-18 | 4d | 38d | 0d |  | Costanzo Rossi - Mobile Designer | 32h | 571.52 |
| 67 | 5.2 | Realizzazione dei mockup |  | 7d | 2021-06-21 | 2021-06-29 | 66 | 2021-06-21 | 2021-06-29 | 7d | 38d | 0d |  | Costanzo Rossi - Mobile Designer; Bryan Johnson - App Developer; Marco Ferrari - App Developer | 136h | 2,349.76 |
| 68 | 5.3 | Documento di progettazione | milestone | 0d | 2021-06-29 | 2021-06-29 | 67 | 2021-06-29 | 2021-06-29 | 0d | 144d |  |  |  |  |  |
| 69 | 5.4 | Sviluppo dell’app |  | 60d | 2021-08-23 | 2021-11-12 | 67, 53 | 2021-08-16 | 2021-11-05 | 60d | 0d |  | start no earlier than 2021-06-28 | Bryan Johnson - App Developer; Marco Ferrari - App Developer; Christian Genovesi - Cloud Architect | 1000h | 17,862 |
| 70 | 5.5 | App Cardeto Smart Park | milestone | 0d | 2021-11-12 | 2021-11-12 | 69 | 2021-11-05 | 2021-11-05 | 0d | 46d |  |  |  |  |  |
| 71 | 5.6 | Testing dell'app |  | 4d | 2021-11-15 | 2021-11-18 | 69 | 2021-11-08 | 2021-11-11 | 4d | 0d |  | start no earlier than 2021-06-07 | Marco Ferrari - App Developer; Bryan Johnson - App Developer; Luciana Ranalli - Responsabile Sicurezza; Giovanni Fazzini- Responsabile Qualità | 128h | 2,373.12 |
| 72 | 5.7 | Report test app | milestone | 0d | 2021-11-18 | 2021-11-19 | 71 | 2021-11-11 | 2021-11-11 | 0d | 41d |  | start no earlier than 2021-11-18 |  |  |  |
| 73 | 5.8 | Scrittura della documentazione |  | 7d | 2021-11-19 | 2021-11-29 | 71 | 2021-11-12 | 2021-11-22 | 7d | 0d |  |  | Bryan Johnson - App Developer; Marco Ferrari - App Developer | 112h | 1,889.44 |
| 74 | 5.9 | Documentazione del software | milestone | 0d | 2021-11-29 | 2021-11-29 | 73 | 2021-11-22 | 2021-11-22 | 0d | 35d |  |  |  |  |  |
| 75 | 5.10 | SAL fine sviluppo app |  | 1d | 2021-11-30 | 2021-11-30 | 73 | 2021-11-23 | 2021-11-23 | 1d | 34d |  |  |  |  |  |
| 76 | 5.11 | Pubblicazione dell’app |  | 1d | 2021-11-30 | 2021-11-30 | 73 | 2021-11-23 | 2021-11-23 | 1d | 34d |  |  |  |  |  |
| 77 | 5.12 | Definizione del piano di manutenzione e aggiornamento |  | 2d | 2021-11-30 | 2021-12-01 | 73 | 2021-11-23 | 2021-11-24 | 2d | 0d |  |  | Marco Ferrari - App Developer; Bryan Johnson - App Developer | 32h | 539.84 |
| 78 | 5.13 | Piano di manutenzione e aggiornamento | milestone | 0d | 2021-12-01 | 2021-12-01 | 77 | 2021-11-24 | 2021-11-24 | 0d | 33d |  |  |  |  |  |
| 79 | 5.14 | Milestone fine realizzazione app mobile | milestone | 0d | 2021-12-01 | 2021-12-01 | 77 | 2021-11-24 | 2021-11-24 | 0d | 33d |  |  |  |  |  |
| 80 | 6 | **Attività di diffusione e disseminazione dei risultati** |  | 31d | 2021-12-02 | 2022-01-13 | 77 | 2021-11-25 | 2022-01-07 | 32d | 0d |  |  |  | 256h | 6,915.48 |
| 81 | 6.1 | Realizzazione di materiale informativo |  | 20d | 2021-12-02 | 2021-12-29 | 77 | 2021-11-25 | 2021-12-22 | 20d | 13d | 0d |  | Giacomo Ascani - Marketing Supervisor; Studio Grafico [0.1%] | 56h | 2,913.72 |
| 82 | 6.2 | Materiale informativo | milestone | 0d | 2021-12-29 | 2021-12-29 | 81 | 2021-12-22 | 2021-12-22 | 0d | 13d |  |  |  |  |  |
| 83 | 6.3 | Aggiornamento del sito aziendale e dei social network |  | 7d | 2021-12-02 | 2021-12-10 | 77 | 2021-11-25 | 2021-12-03 | 7d | 26d | 0d | start no earlier than 2021-08-30 | Antonio Cosenza - Social Media Manager | 16h | 391.68 |
| 84 | 6.4 | Post in sito aziendale e social | milestone | 0d | 2021-12-10 | 2021-12-10 | 83 | 2021-12-03 | 2021-12-03 | 0d | 26d |  |  |  |  |  |
| 85 | 6.5 | Organizzazione di eventi di diffusione |  | 30d | 2021-12-02 | 2022-01-12 | 77 | 2021-11-25 | 2022-01-05 | 30d | 0d |  | start no earlier than 2021-10-18 | Giacomo Ascani - Marketing Supervisor | 184h | 3,610.08 |
| 86 | 6.6 | Evento di innaugurazione | milestone | 0d | 2022-01-12 | 2022-01-12 | 85 | 2022-01-05 | 2022-01-05 | 0d | 3d |  |  |  |  |  |
| 87 | 6.7 | Rilascio applicazione al pubblico |  | 1d | 2022-01-13 | 2022-01-13 | 85 | 2022-01-06 | 2022-01-06 | 1d | 0d |  | start no earlier than 2021-10-05 |  |  |  |
| 88 | 6.8 | SAL fine attività promozione |  | 1d | 2022-01-13 | 2022-01-13 | 85 | 2022-01-07 | 2022-01-07 | 1d | 2d |  | start no earlier than 2022-01-07 |  |  |  |
| 89 | 6.9 | Milestone fine attività di diffusione | milestone | 0d | 2022-01-13 | 2022-01-13 | 87 | 2022-01-07 | 2022-01-07 | 0d | 2d |  | start no earlier than 2022-01-07 |  |  |  |
